# ORL_et_Prisc

Schedule from Planner, 2015-04-08 to 2015-07-10.
Auto-construction

## Calendars

- Défaut: Mon-Fri 08:00-12:00, 13:00-17:00; Sat-Sun off.

## Schedule

| ID | WBS | Task | Start | Finish | Predecessors | Complete | Work |
| --- | --- | --- | --- | --- | --- | --- | --- |
| 1 | 1 | Plan Electricité | 2015-04-08 | 2015-04-08 |  |  | 8h |
| 2 | 2 | Plan Plomberie | 2015-04-08 | 2015-04-08 |  |  | 8h |
| 3 | 3 | Plan Revêtements de sol | 2015-04-08 | 2015-04-08 |  |  | 8h |
| 4 | 4 | Lister les menuiseries | 2015-04-08 | 2015-04-08 |  |  | 8h |
| 5 | 5 | Devis Isopaille | 2015-04-08 | 2015-04-08 |  |  | 8h |
| 6 | 6 | Devis Fermettes | 2015-04-08 | 2015-04-08 |  |  | 8h |
| 7 | 7 | **En attendant la signature** | 2015-04-08 | 2015-04-13 |  |  | 152h |
| 8 | 7.1 | **Plan pour paille** | 2015-04-08 | 2015-04-08 |  |  | 16h |
| 9 | 7.1.1 | Vues en plan (paires et impaires, pleines ou pas, fenêtres) | 2015-04-08 | 2015-04-08 |  |  | 8h |
| 10 | 7.1.2 | Vues façades | 2015-04-08 | 2015-04-08 |  |  | 8h |
| 11 | 7.2 | Plan d'implantation | 2015-04-08 | 2015-04-08 |  |  | 8h |
| 12 | 7.3 | **Plan pour debit bois** | 2015-04-08 | 2015-04-13 |  |  | 112h |
| 13 | 7.3.1 | **Plan Ossature bois - Façade Sud** | 2015-04-08 | 2015-04-08 |  |  | 16h |
| 14 | 7.3.1.1 | Plan de détail | 2015-04-08 | 2015-04-08 |  |  | 8h |
| 15 | 7.3.1.2 | Plan façade | 2015-04-08 | 2015-04-08 |  |  | 8h |
| 16 | 7.3.2 | Plan Ossature bois - SAS | 2015-04-09 | 2015-04-09 | 13 |  | 4h |
| 17 | 7.3.3 | Plan Carport | 2015-04-10 | 2015-04-13 | 22 |  | 16h |
| 18 | 7.3.4 | **Plan Charpente poutre I Maison** | 2015-04-09 | 2015-04-09 | 16 |  | 2h |
| 19 | 7.3.4.1 | Vue en plan | 2015-04-09 | 2015-04-09 |  |  | 2h |
| 20 | 7.3.4.2 | Vue en coupe | 2015-04-09 | 2015-04-09 |  | 100% |  |
| 21 | 7.3.5 | **Plan Charpente poutre I Musique** | 2015-04-09 | 2015-04-09 | 18 |  | 2h |
| 22 | 7.3.5.1 | Vue en plan | 2015-04-09 | 2015-04-09 |  |  | 2h |
| 23 | 7.3.5.2 | Vue en coupe | 2015-04-09 | 2015-04-09 |  | 100% |  |
| 24 | 7.3.6 | **Plan lisse basse** | 2015-04-08 | 2015-04-08 |  |  | 32h |
| 25 | 7.3.6.1 | **Vue en plan** | 2015-04-08 | 2015-04-08 |  |  | 32h |
| 26 | 7.3.6.1.1 | Passages des sangles de précompression | 2015-04-08 | 2015-04-08 |  |  | 8h |
| 27 | 7.3.6.1.2 | Passages des sangles définitives | 2015-04-08 | 2015-04-08 |  |  | 8h |
| 28 | 7.3.6.1.3 | Calepinage OSB | 2015-04-08 | 2015-04-08 |  |  | 8h |
| 29 | 7.3.6.1.4 | Entretoises + support de broche | 2015-04-08 | 2015-04-08 |  |  | 8h |
| 30 | 7.3.6.2 | Plan de détail | 2015-04-08 | 2015-04-08 |  | 100% |  |

Notes:
- 8: Définir le nombre de bottes

| ID | WBS | Task | Type | Duration | Start | Finish | Predecessors | Complete | Constraint | Work |
| --- | --- | --- | --- | --- | --- | --- | --- | --- | --- | --- |
| 31 | 7.3.7 | **Plan lisse haute** |  |  | 2015-04-08 | 2015-04-08 |  |  |  | 32h |
| 32 | 7.3.7.1 | **Vue en plan** |  |  | 2015-04-08 | 2015-04-08 |  |  |  | 32h |
| 33 | 7.3.7.1.1 | Passages de sangles de précompression |  |  | 2015-04-08 | 2015-04-08 |  |  |  | 8h |
| 34 | 7.3.7.1.2 | Passages de sangles définitives |  |  | 2015-04-08 | 2015-04-08 |  |  |  | 8h |
| 35 | 7.3.7.1.3 | Calepinage OSB |  |  | 2015-04-08 | 2015-04-08 |  |  |  | 8h |
| 36 | 7.3.7.1.4 | Croisement des lisses |  |  | 2015-04-08 | 2015-04-08 |  |  |  | 8h |
| 37 | 7.3.7.2 | Plan de détail |  |  | 2015-04-08 | 2015-04-08 |  | 100% |  |  |
| 38 | 7.3.8 | Plan liaison SAS |  |  | 2015-04-08 | 2015-04-08 |  |  |  | 8h |
| 39 | 7.4 | **Plan Fondations** |  |  | 2015-04-08 | 2015-04-08 |  |  |  | 16h |
| 40 | 7.4.1 | Plan d'évacuation des EU |  |  | 2015-04-08 | 2015-04-08 |  |  |  | 8h |
| 41 | 7.4.2 | Plan de décaissement |  |  | 2015-04-08 | 2015-04-08 |  |  |  | 8h |
| 42 | 8 | Signature terrain | milestone | 0d | 2015-05-06 | 2015-05-06 |  |  | must start on 2015-05-06 |  |
| 43 | 9 | **Préparer et lancer les commandes** |  |  | 2015-04-08 | 2015-04-08 |  |  |  | 8h |
| 44 | 9.1 | Terrassement, matériaux fondations, lot bois, paille, quincaillerie, bambou, toiture végétalisée, menuiserie, électricité, plomberie |  |  | 2015-04-08 | 2015-04-08 |  |  |  | 8h |
| 45 | 10 | Mettre en place un planning de livraisons |  |  | 2015-04-08 | 2015-04-08 |  |  |  | 8h |
| 46 | 11 | **Travaux** |  |  | 2015-04-08 | 2015-07-10 |  |  |  | 552h |
| 47 | 11.1 | Mise en place du compteur temporaire de chantier |  |  | 2015-06-15 | 2015-06-15 |  |  | must start on 2015-06-15 | 8h |
| 48 | 11.2 | Mise n place d'un compteur d'eau et bec de cygne |  |  | 2015-06-15 | 2015-06-15 |  |  | must start on 2015-06-15 | 8h |
| 49 | 11.3 | Implantations (avec outillage de mesure, les piquets, ...) |  |  | 2015-06-16 | 2015-06-16 |  |  | must start on 2015-06-16 | 8h |
| 50 | 11.4 | Préparation réception des matériaux |  |  | 2015-06-17 | 2015-06-17 |  |  | must start on 2015-06-17 | 8h |
| 51 | 11.5 | Terrassement du chemin d'accès |  |  | 2015-06-18 | 2015-06-18 | 50 |  |  | 8h |
| 52 | 11.6 | Passages VRD (tranchée technique, regard intermédiaire, tabouret) et anti-retour |  |  | 2015-06-19 | 2015-06-19 | 51 |  |  | 8h |
| 53 | 11.7 | Terrassement des constructions |  |  | 2015-06-22 | 2015-06-22 | 52 |  |  | 8h |
| 54 | 11.8 | Stockage de la terre végétale |  |  | 2015-06-23 | 2015-06-23 | 53 |  |  | 8h |

| ID | WBS | Task | Start | Finish | Predecessors | Work |
| --- | --- | --- | --- | --- | --- | --- |
| 55 | 11.9 | **Mises en oeuvre de la fondation** | 2015-06-24 | 2015-07-08 | 54 | 88h |
| 56 | 11.9.1 | Pose du film géotextile en fond de terrassement | 2015-06-24 | 2015-06-24 |  | 8h |
| 57 | 11.9.2 | Pose des réseaux de drainage (tubes et regards) | 2015-06-25 | 2015-06-25 | 56 | 8h |
| 58 | 11.9.3 | Mise en place d'un premier niveau de pouzzolane 20/40 et dammage | 2015-06-26 | 2015-06-26 | 57 | 8h |
| 59 | 11.9.4 | Mise en place du réseau d'évacuation des EU diam. 100 | 2015-06-29 | 2015-06-29 | 58 | 8h |
| 60 | 11.9.5 | Mise en place de la prise d'air du poêle | 2015-06-30 | 2015-06-30 | 59 | 8h |
| 61 | 11.9.6 | Répartition de la tranchée technique dans les constructions | 2015-07-01 | 2015-07-01 | 60 | 8h |
| 62 | 11.9.7 | Mise en place du réseau d'alimentation eau chaude / froide | 2015-07-02 | 2015-07-02 | 61 | 8h |
| 63 | 11.9.8 | Mise en place d'un deuxième niveau de pouzzolane 20/40 et dammage | 2015-07-03 | 2015-07-03 | 62 | 8h |
| 64 | 11.9.9 | Mise en place du réseau élec + eau de la récupération d'eau + trop plein | 2015-07-06 | 2015-07-06 | 63 | 8h |
| 65 | 11.9.10 | Mise en place de la couche de finition de pouzzolane 7/15 et dammage | 2015-07-07 | 2015-07-07 | 64 | 8h |
| 66 | 11.9.11 | Fiche d'auto-contrôle | 2015-07-08 | 2015-07-08 | 65 | 8h |
| 67 | 11.10 | Collecte de palettes + bâches de protection lieux de stockage et construction | 2015-07-09 | 2015-07-09 | 66 | 8h |
| 68 | 11.11 | Création de zones de stockage pour l'outillage et la quincaillerie | 2015-07-10 | 2015-07-10 | 67 | 8h |
| 69 | 11.12 | **Organisation d'une zone de travail du lot bois et stockage** | 2015-04-08 | 2015-04-08 |  | 32h |
| 70 | 11.12.1 | Stockage livraison bois | 2015-04-08 | 2015-04-08 |  | 8h |
| 71 | 11.12.2 | Tri et ventilation | 2015-04-08 | 2015-04-08 |  | 8h |
| 72 | 11.12.3 | Production | 2015-04-08 | 2015-04-08 |  | 8h |
| 73 | 11.12.4 | Stockage des éléments terminés | 2015-04-08 | 2015-04-08 |  | 8h |
| 74 | 11.13 | **Organisation d'une zone de stockage des bottes de paille** | 2015-04-08 | 2015-04-08 |  | 8h |
| 75 | 11.13.1 | Fabrication des aiguilles spécifiques de reconditionnement des bottes + liens | 2015-04-08 | 2015-04-08 |  | 8h |
| 76 | 11.14 | **Préfabrication et organisation avant mise en oeuvre** | 2015-04-08 | 2015-04-08 |  | 48h |
| 77 | 11.14.1 | Fabrication Lisses basses, entretoises et panneaux | 2015-04-08 | 2015-04-08 |  | 8h |
| 78 | 11.14.2 | Fabrication Lisses hautes, entretoises et panneaux | 2015-04-08 | 2015-04-08 |  | 8h |
| 79 | 11.14.3 | Fabrication des précadres | 2015-04-08 | 2015-04-08 |  | 8h |
| 80 | 11.14.4 | Fabrication des angles de précompression | 2015-04-08 | 2015-04-08 |  | 8h |
| 81 | 11.14.5 | Fabrication Poutres en I ou fermettes | 2015-04-08 | 2015-04-08 |  | 8h |
| 82 | 11.14.6 | Fabrication des broches, aiguilles (Bambou / Noisettier droit, ...) et agraphes | 2015-04-08 | 2015-04-08 |  | 8h |

| ID | WBS | Task | Start | Finish | Predecessors | Work |
| --- | --- | --- | --- | --- | --- | --- |
| 83 | 11.15 | **Mise en oeuvre hors d'eau hors d'air** | 2015-04-08 | 2015-05-13 |  | 288h |
| 84 | 11.15.1 | **Lisses basses** | 2015-04-08 | 2015-04-14 |  | 40h |
| 85 | 11.15.1.1 | Pose d'un grillage petite maille sous les lisses et la maison + retour sur lisses | 2015-04-08 | 2015-04-08 |  | 8h |
| 86 | 11.15.1.2 | Mise en place de la bande d'arase sous les lisses basses | 2015-04-09 | 2015-04-09 | 85 | 8h |
| 87 | 11.15.1.3 | Assemblage des lisses basses | 2015-04-10 | 2015-04-10 | 86 | 8h |
| 88 | 11.15.1.4 | Percement des trous pour tubes de précompression | 2015-04-13 | 2015-04-13 | 87 | 8h |
| 89 | 11.15.1.5 | Pose des broches et isolation intérieure granulat de liège | 2015-04-14 | 2015-04-14 | 88 | 8h |
| 90 | 11.15.2 | **Pose des angles de compression** | 2015-04-15 | 2015-04-15 |  | 8h |
| 91 | 11.15.2.1 | CV + contrôle aplombs | 2015-04-15 | 2015-04-15 | 89 | 8h |
| 92 | 11.15.3 | **Pose des précadres** | 2015-04-16 | 2015-04-16 |  | 8h |
| 93 | 11.15.3.1 | CV + contrôle aplombs | 2015-04-16 | 2015-04-16 | 91 | 8h |
| 94 | 11.15.4 | **Elevation des murs paille** | 2015-04-17 | 2015-04-23 |  | 40h |
| 95 | 11.15.4.1 | Tri et contrôle physique des bottes (dimensions, propreté, dentisé, humidité) : fiche d'auto-contrôle | 2015-04-17 | 2015-04-17 | 93 | 8h |
| 96 | 11.15.4.2 | Taille des bottes pour précadres et pose du premier rang sur broches | 2015-04-20 | 2015-04-20 | 95 | 8h |
| 97 | 11.15.4.3 | Pose des rangs 2, 3 et 4, compris la pose des agraphes dans les angles de chaque rang et contrôle de l'aplomb | 2015-04-21 | 2015-04-21 | 96 | 8h |
| 98 | 11.15.4.4 | Pose des aiguilles | 2015-04-22 | 2015-04-22 | 97 | 8h |
| 99 | 11.15.4.5 | Pose des rangs 5, 6 et 7, compris la pose des agraphes dans les angles de chaque rang et contrôle de l'aplomb | 2015-04-23 | 2015-04-23 | 98 | 8h |
| 100 | 11.15.5 | **Lisses hautes** | 2015-04-24 | 2015-05-04 |  | 56h |
| 101 | 11.15.5.1 | Raccourcir les précadres | 2015-04-24 | 2015-04-24 | 99 | 8h |
| 102 | 11.15.5.2 | Assemblage des lisses hautes sur le mur | 2015-04-27 | 2015-04-27 | 101 | 8h |
| 103 | 11.15.5.3 | Percement des trous des passages des aiguilles dans l'OSB, à l'aide d'une scie cloche suivant diamètre des aiguilles (3-4 cm) | 2015-04-28 | 2015-04-28 | 102 | 8h |
| 104 | 11.15.5.4 | Mise en place des aiguilles | 2015-04-29 | 2015-04-29 | 103 | 8h |
| 105 | 11.15.5.5 | Fixation des butées d'aiguilles | 2015-04-30 | 2015-04-30 | 104 | 8h |
| 106 | 11.15.5.6 | Contrôle de l'aplomb | 2015-05-01 | 2015-05-01 | 105 | 8h |
| 107 | 11.15.5.7 | Isolation des lises hautes en granulat de liège | 2015-05-04 | 2015-05-04 | 106 | 8h |

| ID | WBS | Task | Start | Finish | Predecessors | Work |
| --- | --- | --- | --- | --- | --- | --- |
| 108 | 11.15.6 | **Précompression des murs** | 2015-04-08 | 2015-05-13 |  | 80h |
| 109 | 11.15.6.1 | Contrôle des hauteurs avant précompression suivant protocole de mesure | 2015-05-05 | 2015-05-05 | 107 | 8h |
| 110 | 11.15.6.2 | Positionnement des sangles définitives et boucles en attente | 2015-05-06 | 2015-05-06 | 109 | 8h |
| 111 | 11.15.6.3 | Mise en place des barres basses et hautes de précompression en commençant par les angles, et des sangles de fret | 2015-05-07 | 2015-05-07 | 110 | 8h |
| 112 | 11.15.6.4 | Précompressions des angles | 2015-05-08 | 2015-05-08 | 111 | 8h |
| 113 | 11.15.6.5 | Contrôle des hauteurs et des niveaux : détermination d'un point de référence de niveau avec laser et pige | 2015-05-11 | 2015-05-11 | 112 | 8h |
| 114 | 11.15.6.6 | Précompression des longueurs | 2015-05-12 | 2015-05-12 | 113 | 8h |
| 115 | 11.15.6.7 | Contrôle des hauteurs et des niveaux suivant point de référence | 2015-05-13 | 2015-05-13 | 114 | 8h |
| 116 | 11.15.6.8 | Nouvelle précompression à optimiser et contrôle de niveaux | 2015-04-08 | 2015-04-08 |  | 8h |
| 117 | 11.15.6.9 | Mise en tension des sangles définitives et contrôle des niveaux et aplomb des murs au persuadeur | 2015-04-08 | 2015-04-08 |  | 8h |
| 118 | 11.15.6.10 | Fermeture de la lisse haute | 2015-04-08 | 2015-04-08 |  | 8h |
| 119 | 11.15.7 | **Ossature bois façade sud et sas d'entrée** | 2015-04-08 | 2015-04-08 |  | 40h |
| 120 | 11.15.7.1 | Pose d'un grillage petite maille sous les lisses et la maison + retour sur lisses | 2015-04-08 | 2015-04-08 |  | 8h |
| 121 | 11.15.7.2 | Mise en place de la bande d'arase sous les lisses basses | 2015-04-08 | 2015-04-08 |  | 8h |
| 122 | 11.15.7.3 | Mesure de la hauteur du mur paille pour adapter la hauteur de l'ossature | 2015-04-08 | 2015-04-08 |  | 8h |
| 123 | 11.15.7.4 | Préfabrication des modules au sol et levage | 2015-04-08 | 2015-04-08 |  | 8h |
| 124 | 11.15.7.5 | Raccords MOB + PP et fixations | 2015-04-08 | 2015-04-08 |  | 8h |
| 125 | 11.15.8 | **Charpente** | 2015-04-08 | 2015-04-08 |  | 8h |
| 126 | 11.15.8.1 | Pose Poutres en I | 2015-04-08 | 2015-04-08 |  | 8h |
| 127 | 11.15.9 | Ossature SAS | 2015-04-08 | 2015-04-08 |  | 8h |
| 128 | 11.16 | Carport | 2015-04-08 | 2015-04-08 |  | 8h |
